# PI_projekt_PickBeer_finalni

How a schedule from MS Project changed from version to version. A marks actual dates.

## Version 1 (saved 2014-04-26)

Note of the change: Projektni plan - MS Project - dorada

| ID | WBS | Task | Duration | Start | Finish | Predecessors | Total float | Constraint |
| --- | --- | --- | --- | --- | --- | --- | --- | --- |
| 1 | 1 | **Grim Bee** | 52.38d | 2014-03-21 | 2014-06-27 |  | 0d |  |
| 2 |  | POČETAK PROJEKTA | 0d | 2014-03-21 | 2014-03-21 |  | 65.72d | start no earlier than 2014-03-21 |
| 3 | 1.2 | **Planiranje projekta** | 19d | 2014-03-21 | 2014-04-25 |  | -4.12d |  |
| 4 |  | Definiranje projektnog tima | 1h | 2014-03-21 | 2014-03-21 |  | 14d | start no earlier than 2014-03-21 |
| 5 |  | Sastanak tima | 3h | 2014-03-21 | 2014-03-21 | 4 | 6.38d | start no earlier than 2014-03-21 |
| 6 | 1.2.3 | **Prijava projekta** | 0.12d | 2014-03-22 | 2014-03-22 | 5 | 6.12d |  |
| 7 |  | Opisati problemsku domenu | 1h | 2014-03-22 | 2014-03-22 | 5 | 13.62d | start no earlier than 2014-03-22 |
| 8 |  | Opisati zahtjeve za funkcionalnošću prog. proizvoda | 1h | 2014-03-22 | 2014-03-22 | 5 | 13.62d | start no earlier than 2014-03-22 |
| 9 |  | Popisati korištenu tehnologiju | 1h | 2014-03-22 | 2014-03-22 | 5 | 13.62d | start no earlier than 2014-03-22 |
| 10 |  | Sastanak - podjela aktivnosti | 7h | 2014-04-01 | 2014-04-02 | 6 | 1.25d | finish no earlier than 2014-04-02 |
| 11 | 1.2.5 | **Priprema dokumentacije** | 11.88d | 2014-04-03 | 2014-04-25 | 6 | -4.12d |  |
| 12 |  | Izrada specifikacija projekta | 1d | 2014-04-03 | 2014-04-04 | 10 | 0.75d | finish no earlier than 2014-04-04 |
| 13 |  | Izrada projektnog plana u MS Project-u | 2d | 2014-04-05 | 2014-04-09 | 12 | 0.38d | start no earlier than 2014-04-05 |
| 14 |  | Opisati dizajn sustava | 1d | 2014-04-10 | 2014-04-11 | 13 | 0d | start no earlier than 2014-04-10 |
| 15 |  | Provedba projekta | 1d | 2014-04-12 | 2014-04-15 | 10 | -1.5d | start no earlier than 2014-04-12 |
| 16 |  | Izrada dokumentacije za 1. fazu | 2d | 2014-04-17 | 2014-04-22 | 15, 12, 13, 14 | -2.88d | start no earlier than 2014-04-17 |
| 17 |  | Dorada dokumentacije | 1d | 2014-04-24 | 2014-04-25 | 16 | -4.12d | finish no earlier than 2014-04-25 |
| 18 |  | ZAVRŠETAK PLANIRANJA | 0d | 2014-04-25 | 2014-04-25 | 3 | -4.12d |  |
| 19 | 1.4 | **IZRADA PROJEKTA** | 29.38d | 2014-04-25 | 2014-06-20 | 3 | -4.12d |  |
| 20 | 1.4.1 | **Modeliranje** | 15.62d | 2014-04-25 | 2014-05-26 | 3 | -4.12d |  |
| 21 |  | Analiza sustava | 1d | 2014-04-25 | 2014-04-28 | 18 | -4.12d |  |
| 22 |  | Izrada Use Case dijagrama | 2d | 2014-04-28 | 2014-05-02 | 21 | -4.12d |  |
| 23 |  | Izrada Activity dijagrama | 2d | 2014-05-02 | 2014-05-06 | 22 | -4.12d |  |
| 24 |  | Izrada Class dijagrama | 1d | 2014-05-06 | 2014-05-08 | 23 | -4.12d |  |
| 25 |  | Izrada Sequence dijagrama | 2d | 2014-05-08 | 2014-05-12 | 24 | -4.12d |  |
| 26 |  | Izrada ERA modela | 2d | 2014-05-12 | 2014-05-15 | 25 | -4.12d |  |
| 27 |  | Sastanak tima | 5h | 2014-05-15 | 2014-05-16 | 26 | -4.12d |  |
| 28 |  | Izmjena I dorada dijagrama | 1d | 2014-05-16 | 2014-05-19 | 27 | -4.12d |  |
| 29 |  | Modeliranje baze podataka | 4d | 2014-05-19 | 2014-05-26 | 28 | -4.12d |  |
| 30 |  | Završetak modeliranja | 0d | 2014-05-26 | 2014-05-26 | 20 | -4.12d |  |
| 31 | 1.4.3 | **Izrada aplikacije** | 13.75d | 2014-05-26 | 2014-06-20 | 20 | -4.12d |  |
| 32 |  | Izrada i popunjavanje baze podataka | 4d | 2014-05-26 | 2014-06-02 | 30 | -4.12d |  |
| 33 |  | Pisanje koda | 5d | 2014-06-02 | 2014-06-11 | 32 | -4.12d |  |
| 34 |  | Testiranje | 1d | 2014-06-11 | 2014-06-12 | 33 | -4.12d |  |
| 35 |  | Sastanak tima | 6h | 2014-06-12 | 2014-06-13 | 34 | -4.12d |  |
| 36 |  | Ispravljanje grešaka i dorada | 2d | 2014-06-13 | 2014-06-17 | 35 | -4.12d |  |
| 37 |  | Finalno testiranje aplikacije | 1d | 2014-06-18 | 2014-06-20 | 36 | -4.12d |  |
| 38 |  | Završetak rada na aplikaciji | 0d | 2014-06-20 | 2014-06-20 | 31 | -4.12d |  |
| 39 | 1.5 | **IZRADA PROJEKTNE DOKUMENTACIJE I PREZENTIRANJE** | 4.12d | 2014-06-12 | 2014-06-20 | 19 |  |  |
| 40 |  | Sastanak tima | 6h | 2014-06-20 | 2014-06-23 | 38 | -4.12d |  |
| 41 |  | Pisanje dokumentacije | 3d | 2014-06-23 | 2014-06-27 | 40 | -4.12d |  |
| 42 |  | Prezentacija | 2h | 2014-06-27 | 2014-06-27 | 41 | -4.12d |  |
| 43 |  | ZAVRŠETAK RADA NA DOKUMENTACIJI | 0d | 2014-06-20 | 2014-06-20 | 39 | 4.12d |  |
| 44 |  | ZAVRŠETAK PROJEKTA | 0d | 2014-06-20 | 2014-06-20 | 43 | 4.12d |  |

## Version 2 (saved 2014-05-29)

Note of the change: dorada MS-projecta

Last finish stays 2014-06-27.

Added:

| ID | Task | Duration | Start | Finish | Predecessors | Resources |
| --- | --- | --- | --- | --- | --- | --- |
| 33 | Izrada baze podataka | 3d | 2014-05-26 | 2014-05-30 |  | Gabriel Glogoški; Mislav Košćak; Laptop 1; Računalo |
| 34 | Popunjavanje baze podacima | 1d | 2014-05-30 | 2014-06-02 | 33 | Ivan Pokec; Laptop 1; Boris Levajac; Laptop 2 |
| 36 | Izrada sučelja | 2d | 2014-06-02 | 2014-06-05 |  | Boris Levajac; Gabriel Glogoški; Ivan Pokec; Laptop 1; Laptop 2; Mislav Košćak; Računalo; Romano Kovač; Tablet |
| 37 | Programiranje klasa | 2d | 2014-06-05 | 2014-06-09 | 36 | Boris Levajac; Gabriel Glogoški; Ivan Pokec; Mislav Košćak; Romano Kovač; Laptop 2; Laptop 1; Računalo |
| 38 | Povezivanje funkcija na bazu podataka | 1d | 2014-06-09 | 2014-06-11 | 37 | Boris Levajac; Gabriel Glogoški; Ivan Pokec; Laptop 1; Laptop 2; Mislav Košćak; Računalo; Romano Kovač; Tablet |

Changed:

| ID | Task | Start | Finish | Duration | Total float | Predecessors | Other |
| --- | --- | --- | --- | --- | --- | --- | --- |
| 32 | **Kreiranje baze podataka** |  |  |  | -4.12d → 0d |  | was named Izrada i popunjavanje baze podataka; resources Boris Levajac; Gabriel Glogoški; Ivan Pokec; Laptop 1; Mislav Košćak; Romano Kovač; Računalo; Laptop 2 → none |
| 35 | **Pisanje koda aplikacije** |  |  |  | -4.12d → 0d | 32 → 34 | was named Pisanje koda; resources Boris Levajac; Gabriel Glogoški; Ivan Pokec; Mislav Košćak; Romano Kovač; Laptop 1; Računalo; Laptop 2 → none |
| 39 | Testiranje |  |  |  | -4.12d → 0d | 35 → 38 |  |
| 44 | **IZRADA PROJEKTNE DOKUMENTACIJE I PREZENTIRANJE** | 2014-06-12 → 2014-06-20 (+8d) | 2014-06-20 → 2014-06-27 (+7d) | 4.12d → 4d | none → 0d | 19 → 43 |  |
| 48 | ZAVRŠETAK RADA NA DOKUMENTACIJI | 2014-06-20 → 2014-06-27 (+7d) | 2014-06-20 → 2014-06-27 (+7d) |  | 4.12d → 0d |  |  |
| 49 | ZAVRŠETAK PROJEKTA | 2014-06-20 → 2014-06-27 (+7d) | 2014-06-20 → 2014-06-27 (+7d) |  | 4.12d → 0d |  |  |
